# Progettazione_BiomesRun_Riva_Chiarani

Schedule from MS Project, 2022-09-02 to 2022-12-23.

## Calendars

- Standard: Mon-Thu off; Fri 08:20-09:50, 10:05-11:35, 13:15-14:45; Sat-Sun off. Exceptions (off unless hours are given): 2022-11-04 (Vacanze dei morti).

## Resources

| Resource |
| --- |
| Simone |
| Nathan |

## Schedule

| ID | WBS | Task | Type | Duration | Start | Finish | Predecessors | Baseline start | Baseline finish | Baseline duration | Total slack | Free slack | Constraint | Resources | Work |
| --- | --- | --- | --- | --- | --- | --- | --- | --- | --- | --- | --- | --- | --- | --- | --- |
| 1 | 1 | **Biomes Run** |  | 8.62d | 2022-09-02 09:00 | 2022-12-23 10:45 |  | 2022-09-02 09:00 | 2022-12-23 14:32 | 8.89d | 0.04d |  |  |  | 85h |
| 2 | 1.1 | **Analisi** |  | 0.81d | 2022-09-02 09:00 | 2022-09-09 11:15 |  | 2022-09-02 09:00 | 2022-09-09 11:15 | 0.81d | 0.04d | 0d |  |  | 8h |
| 3 | 1.1.1 | Stesura QdC |  | 3h | 2022-09-02 09:00 | 2022-09-02 13:55 |  | 2022-09-02 09:00 | 2022-09-02 13:55 | 3h | 0.04d |  | start no earlier than 2022-09-02 09:00 | Nathan; Simone | 6h |
| 4 | 1.1.2 | QdC correzione |  | 1h | 2022-09-09 09:00 | 2022-09-09 10:15 | 3 | 2022-09-09 09:00 | 2022-09-09 10:15 | 1h | 0.29d | 0d | start no earlier than 2022-09-09 09:00 | Nathan | 1h |
| 5 | 1.1.3 | Scelta Priorità |  | 1h | 2022-09-09 10:15 | 2022-09-09 11:15 | 4 | 2022-09-09 10:15 | 2022-09-09 11:15 | 1h | 0.29d | 0d |  | Nathan | 1h |
| 6 | 1.2 | **Progettazione** |  | 3.5h | 2022-09-09 11:15 | 2022-09-16 10:15 | 2 | 2022-09-09 11:15 | 2022-09-16 10:15 | 3.5h | 0.29d | 0d |  |  | 5h |
| 7 | 1.2.1 | Stesura cartacea layout livelli |  | 1h | 2022-09-09 11:15 | 2022-09-09 13:55 | 2 | 2022-09-09 11:15 | 2022-09-09 13:55 | 1h | 0.6d | 0.31d |  | Simone | 1h |
| 8 | 1.2.2 | Stesura Gantt |  | 3h | 2022-09-09 11:15 | 2022-09-16 09:30 | 5 | 2022-09-09 11:15 | 2022-09-16 09:30 | 3h | 0.29d | 0d |  | Simone | 3h |
| 9 | 1.2.3 | Use Case |  | 0.5h | 2022-09-16 09:30 | 2022-09-16 10:15 | 8 | 2022-09-16 09:30 | 2022-09-16 10:15 | 0.5h | 0.29d |  |  | Nathan; Simone | 1h |
| 10 | 1.3 | **Realizzazione** |  | 7.38d | 2022-09-16 10:15 | 2022-12-23 10:45 | 6 | 2022-09-16 10:15 | 2022-12-23 14:32 | 7.64d | 0.29d |  |  |  | 72h |
| 11 | 1.3.1 | **Priorità 1** |  | 1d | 2022-09-16 10:15 | 2022-09-30 09:00 | 6 | 2022-09-16 10:15 | 2022-09-23 14:25 | 0.88d | 0.29d | 0d |  |  | 13h |
| 12 | 1.3.1.1 | Stesura template labirinti |  | 5h | 2022-09-16 10:15 | 2022-09-23 10:45 | 7, 8 | 2022-09-16 10:15 | 2022-09-23 10:45 | 5h | 0.29d | 0d |  | Nathan; Simone | 10h |
| 13 | 1.3.1.2 | Raccolta template oggetti 3D |  | 3h | 2022-09-23 10:45 | 2022-09-30 09:00 | 7, 8, 12 | 2022-09-23 10:45 | 2022-09-23 14:25 | 2h | 0.29d | 0d |  | Nathan | 3h |
| 14 | 1.3.2 | **Priorità 2** |  | 4.62d | 2022-09-30 09:00 | 2022-12-02 10:15 | 11 | 2022-09-23 14:25 | 2022-12-02 11:22 | 4.89d | 0.29d | 0d |  |  | 45h |
| 15 | 1.3.2.1 | **Programmazione gioco** |  | 4.62d | 2022-09-30 09:00 | 2022-12-02 10:15 | 11 | 2022-09-23 14:25 | 2022-10-21 10:45 | 2d | 0.29d | 0d |  |  | 45h |
| 16 | 1.3.2.1.1 | Prima persona |  | 14h | 2022-09-30 09:00 | 2022-10-21 09:30 | 12 | 2022-09-23 14:25 | 2022-09-30 13:55 | 4h | 0.29d | 0d |  | Simone | 14h |
| 17 | 1.3.2.1.2 | movimento personaggio |  | 5h | 2022-10-21 09:30 | 2022-10-28 10:15 | 12, 16 | 2022-09-30 13:55 | 2022-10-07 10:45 | 3h | 0.29d | 0d |  | Simone | 5h |
| 18 | 1.3.2.1.3 | Luci, clima, audio |  | 4h | 2022-09-30 09:00 | 2022-10-07 08:30 | 12, 13 | 2022-09-23 14:25 | 2022-09-30 10:15 | 2h | 3.92d | 0d |  | Simone | 4h |
| 19 | 1.3.2.1.4 | Oggetti vari (chiavi, bonus, stelline, immortalità) |  | 4h | 2022-10-07 08:30 | 2022-10-07 14:25 | 13, 18 | 2022-09-30 10:15 | 2022-10-07 09:30 | 4h | 3.92d |  |  | Simone | 4h |
| 20 | 1.3.2.1.5 | Vite personaggio |  | 10h | 2022-10-28 10:15 | 2022-11-18 11:15 | 16, 17 | 2022-10-07 10:45 | 2022-10-14 11:15 | 5h | 0.29d | 0d |  | Simone | 10h |
| 21 | 1.3.2.1.6 | Programmazione mostri |  | 8h | 2022-11-18 11:15 | 2022-12-02 10:15 | 12, 20 | 2022-10-14 11:15 | 2022-10-21 10:45 | 4h | 0.29d |  |  | Simone | 8h |
| 22 | 1.3.2.2 | DataBase classifica | milestone | 0d | 2022-12-02 10:15 | 2022-12-02 10:15 | 15 | 2022-10-21 10:45 | 2022-12-02 11:22 | 2.89d | 0.29d | 0d |  | Simone |  |
| 23 | 1.3.3 | **Priorità 3** |  | 1.75d | 2022-12-02 10:15 | 2022-12-23 10:45 | 14 | 2022-12-02 11:22 | 2022-12-23 14:32 | 1.88d | 0.29d |  |  |  | 14h |
| 24 | 1.3.3.1 | Schermata iniziale |  | 2h | 2022-12-02 10:15 | 2022-12-02 13:55 | 15, 22 | 2022-12-02 11:22 | 2022-12-09 08:37 | 2h | 0.29d | 0d |  | Simone | 2h |
| 25 | 1.3.3.2 | Schermata finale |  | 2h | 2022-12-02 13:55 | 2022-12-09 09:30 | 15, 24 | 2022-12-09 08:37 | 2022-12-09 10:52 | 2h | 0.29d | 0d |  | Simone | 2h |
| 26 | 1.3.3.3 | Schermate livelli |  | 4h | 2022-12-09 09:30 | 2022-12-16 09:00 | 15, 25 | 2022-12-09 10:52 | 2022-12-16 10:22 | 4h | 0.29d | 0d |  | Simone | 4h |
| 27 | 1.3.3.4 | Schermata impostazioni |  | 4h | 2022-12-16 09:00 | 2022-12-23 08:30 | 15, 26 | 2022-12-16 10:22 | 2022-12-23 08:37 | 3h | 0.29d | 0d |  | Simone | 4h |
| 28 | 1.3.3.5 | Schermata vincita |  | 2h | 2022-12-23 08:30 | 2022-12-23 10:45 | 27, 22 | 2022-12-23 08:37 | 2022-12-23 14:32 | 4h | 0.29d |  |  | Simone | 2h |
| 29 | 2 | Documentazione |  | 8.5d | 2022-09-02 14:15 | 2022-12-23 18:00 | 3 | 2022-09-02 14:15 | 2022-12-23 18:00 | 8.5d | 0d |  | finish no earlier than 2022-12-23 18:00 |  | 30h |
